# CDI TESALIA - MODULO 1 (OBRA GRIS)

Schedule from MS Project XML, 2026-07-13 to 2026-09-24, costs in $.

## Calendars

- Standard: Mon-Fri 08:00-12:00, 13:00-17:00; Sat-Sun off.

## Resources

| Resource |
| --- |
| Mano de obra (cuadrillas) |
| Equipo y maquinaria |
| Materiales |

## Schedule

| ID | Task | Duration | Start | Finish | Predecessors | Cost |
| --- | --- | --- | --- | --- | --- | --- |
| 1 | Preliminares y localizacion | 3d | 2026-07-13 | 2026-07-15 |  |  |
| 2 | Excavacion a maquina | 4d | 2026-07-16 | 2026-07-21 | 1 | 64,959.52 |
| 3 | Excavacion manual y afinado | 3d | 2026-07-22 | 2026-07-24 | 2 | 5,553.9 |
| 4 | Solado 1500 psi | 2d | 2026-07-27 | 2026-07-28 | 3 | 9,953.64 |
| 5 | Figurado y armado acero cimentacion | 4d | 2026-07-27 | 2026-07-30 | 3 | 90,517.67 |
| 6 | Fundida vigas de cimentacion | 3d | 2026-07-31 | 2026-08-04 | 4, 5 | 100,995.54 |
| 7 | Subbase B-400 + geotextil | 3d | 2026-08-05 | 2026-08-07 | 6 | 96,758.96 |
| 8 | Relleno en recebo | 2d | 2026-08-10 | 2026-08-11 | 7 | 39,832.15 |
| 9 | Armado y fundida de columnas | 6d | 2026-08-05 | 2026-08-12 | 6 | 110,789.94 |
| 10 | Malla y fundida de contrapiso | 4d | 2026-08-12 | 2026-08-17 | 8 | 237,637.81 |
| 11 | Armado y fundida vigas de cubierta | 6d | 2026-08-13 | 2026-08-20 | 9 | 236,322.06 |
| 12 | Placa aligerada de cubierta | 6d | 2026-08-21 | 2026-08-28 | 11 | 229,763.83 |
| 13 | Mamposteria muros bloque No.4 | 10d | 2026-08-18 | 2026-08-31 | 10 | 255,587.81 |
| 14 | Columnetas de confinamiento | 5d | 2026-09-01 | 2026-09-07 | 13 | 189,887.13 |
| 15 | Panete impermeabilizado | 8d | 2026-09-08 | 2026-09-17 | 14 | 65,186.37 |
| 16 | Adoquin exterior | 5d | 2026-09-18 | 2026-09-24 | 15 | 112,584.68 |

Notes:
- 1: Recursos (APU): Comision topografia + ayudantes
- 2: Recursos (APU): Retroexcavadora, volqueta, ayudante / Items: 2.1.1
- 3: Recursos (APU): Ayudantes / Items: 2.1.3
- 4: Recursos (APU): Cuadrilla concreto / Items: 2.2.2
- 5: Recursos (APU): Figurador, oficial, cortadora-dobladora / Items: 2.3.1
- 6: Recursos (APU): Cuadrilla concreto, vibrador, formaleta / Items: 2.2.1
- 7: Recursos (APU): Material granular, rana, ayudantes / Items: 2.1.2, 2.1.6
- 8: Recursos (APU): Recebo, rana / Items: 2.1.4
- 9: Recursos (APU): Cuadrilla concreto, formaleta, figurado / Items: 4.1.1, 4.7.1
- 10: Recursos (APU): Cuadrilla concreto, malla / Items: 4.3.1, 4.6.1
- 11: Recursos (APU): Cuadrilla concreto, formaleta, figurado / Items: 4.2.1, 4.8.1
- 12: Recursos (APU): Cuadrilla concreto, casetones, malla / Items: 4.3.3, 4.9.1
- 13: Recursos (APU): Cuadrilla mamposteria / Items: 5.1.1
- 14: Recursos (APU): Cuadrilla, figurado / Items: 5.1.2, 5.2.1
- 15: Recursos (APU): Cuadrilla panete / Items: 5.1.4
- 16: Recursos (APU): Cuadrilla pisos, rana / Items: 8.1.1
